# caintegrator_project_plan_v3

Schedule from MS Project, 2011-08-01 to 2012-08-08, A marks actual dates.
NIH\NCI

## Calendars

- Standard: Mon-Fri 08:00-12:00, 13:00-17:00; Sat-Sun off. Exceptions (off unless hours are given): 2011-09-05, 2011-11-11, 2011-11-24 to 2011-11-25, 2011-12-26 to 2012-01-02.

## Resources

| Resource |
| --- |
| JP |
| TBH |
| SJ/JP |
| Qut |
| Quy |
| SJ |
| HS |
| Systems |
| MAX |
| system |
| Secuirity Team |
| Coung/Systems |
| will |
| 45 |
| Andy |
| WF |
| ALL |
| Santosh |

## Schedule

| ID | WBS | Task | Type | Duration | Start | Finish | Predecessors | Complete | Constraint | Resources | Work | Actual work |
| --- | --- | --- | --- | --- | --- | --- | --- | --- | --- | --- | --- | --- |
| 1 | 1 | **Adhoc Generic Support** |  | 16d | 2011-08-01 A | 2011-08-22 A |  | 100% |  |  |  |  |
| 2 | 1.1 | TCGA Data Support |  | 2d | 2011-08-01 A | 2011-08-02 A |  | 100% |  |  |  |  |
| 3 | 1.2 | TCGA Data on caIntegrator |  | 4d | 2011-08-17 A | 2011-08-22 A |  | 100% | start no earlier than 2011-08-17 |  |  |  |
| 4 | 1.3 | MATKC Support | milestone | 0d | 2011-08-01 A | 2011-08-01 A |  | 100% |  |  |  |  |
| 5 | 2 | **CaIntegrator Version 1.3.1** |  | 73d? | 2011-08-15 A | 2011-11-29 A |  | 100% |  |  | 718.86h | 718.86h |
| 6 | 2.1 | **JIRA CAINT-1011 508 Compliance** |  | 13d | 2011-08-15 A | 2011-08-31 A |  | 100% |  |  | 56h | 56h |
| 7 | 2.1.1 | Common Accenture Profile Dev/QA |  | 1d | 2011-08-15 A | 2011-08-15 A |  | 100% | start no earlier than 2011-08-15 | Quy | 8h | 8h |
| 8 | 2.1.2 | Identify 508 issues to be fixed and create JIRA user story tasks for each on DEV and QA. |  | 3d | 2011-08-22 A | 2011-08-24 A | 7 | 100% |  | JP | 24h | 24h |
| 9 | 2.1.3 | Fix TABLE tag in caBIO search form. |  | 0.5d | 2011-08-29 A | 2011-08-29 A | 8 | 100% |  | JP | 4h | 4h |
| 10 | 2.1.4 | Fix TABLE tag in gene list search form. |  | 0.5d | 2011-08-29 A | 2011-08-29 A | 9 | 100% |  | JP | 4h | 4h |
| 11 | 2.1.5 | Fix ALT tags in caBIO search form |  | 0.5d | 2011-08-30 A | 2011-08-30 A | 10 | 100% |  | JP | 4h | 4h |
| 12 | 2.1.6 | Fix ALT tags in study summary page |  | 0.5d | 2011-08-30 A | 2011-08-30 A | 11 | 100% |  | JP | 4h | 4h |
| 13 | 2.1.7 | Fix TABLE header in registeration page |  | 0.5d | 2011-08-31 A | 2011-08-31 A | 12 | 100% |  | JP | 4h | 4h |
| 14 | 2.1.8 | Fix TABLE in study summary page. |  | 0.5d | 2011-08-31 A | 2011-08-31 A | 13 | 100% |  | JP | 4h | 4h |
| 15 | 2.2 | **Ongoing maintenance and bug fixes** |  | 18d? | 2011-08-31 A | 2011-09-26 A |  | 100% |  |  | 64h | 64h |
| 16 | 2.2.1 | ADF platform issues |  | 2d | 2011-08-31 A | 2011-09-01 A |  | 100% | start no earlier than 2011-08-31 | JP | 16h | 16h |
| 17 | 2.2.2 | ECAT Prep |  | 2d | 2011-09-02 A | 2011-09-06 A | 16 | 100% |  | SJ; JP | 32h | 32h |
| 18 | 2.2.3 | prepare a point release for section 508 compliance. |  | 2d | 2011-09-19 A | 2011-09-20 A |  | 100% | start no earlier than 2011-09-19 | JP | 16h | 16h |
| 19 | 2.2.4 | Bug fix for typo error and new tag (RC2) |  | 1d? | 2011-09-26 A | 2011-09-26 A |  | 100% |  |  |  |  |
| 20 | 2.3 | QA RC1 |  | 7d | 2011-09-21 A | 2011-09-29 A | 18 | 100% |  | HS | 56h | 56h |
| 21 | 2.4 | **JIRA-CAINT-1047 - Resolve Appscan Issues** |  | 26d | 2011-09-30 A | 2011-11-04 A |  | 100% |  | HS | 424h | 424h |
| 22 | 2.4.1 | Resolve existing medium issues |  | 2d | 2011-09-30 A | 2011-10-03 A | 20 | 100% |  | JP | 16h | 16h |
| 23 | 2.4.2 | Run Appscan |  | 1d | 2011-10-03 A | 2011-10-03 A |  | 100% | start no earlier than 2011-10-03 | Secuirity Team | 8h | 8h |
| 24 | 2.4.3 | Fix medium issues |  | 7d | 2011-10-04 A | 2011-10-12 A | 23 | 100% |  | JP | 56h | 56h |
| 25 | 2.4.4 | Run new Appscan to verify |  | 1d | 2011-10-13 A | 2011-10-13 A | 24 | 100% |  | JP | 8h | 8h |
| 26 | 2.4.5 | Fix all additional medium issues |  | 9d | 2011-10-14 A | 2011-10-26 A | 25 | 100% |  | JP | 72h | 72h |
| 27 | 2.4.6 | Run new Appscan to verify |  | 1d | 2011-10-27 A | 2011-10-27 A | 26 | 100% |  | Systems | 8h | 8h |
| 28 | 2.4.7 | Fix issues from Appscan |  | 2d | 2011-10-28 A | 2011-10-31 A | 27 | 100% |  | JP | 16h | 16h |
| 29 | 2.4.8 | Full Appscan to verify |  | 1d | 2011-11-01 A | 2011-11-01 A | 28 | 100% |  | Systems | 8h | 8h |
| 30 | 2.4.9 | JIRA-CAINT-1066 - Bug fix (Ajax token missing) |  | 2d | 2011-11-02 A | 2011-11-03 A | 29 | 100% |  | JP | 16h | 16h |
| 31 | 2.4.10 | New tag (RC4) for 1.3.1 |  | 1d | 2011-11-04 A | 2011-11-04 A | 30 | 100% |  | JP | 8h | 8h |
| 32 | 2.5 | QA RC4 |  | 6d | 2011-11-07 A | 2011-11-15 A | 21 | 100% |  | HS [114.3%] | 54.86h | 54.86h |
| 33 | 2.6 | Release - Stage/QA/Appscan/Prod/QA |  | 8d | 2011-11-16 A | 2011-11-29 A | 32 | 100% |  | Systems | 64h | 64h |

| ID | WBS | Task | Duration | Start | Finish | Predecessors | Complete | Remaining | Total slack | Free slack | Constraint | Resources | Work | Actual work |
| --- | --- | --- | --- | --- | --- | --- | --- | --- | --- | --- | --- | --- | --- | --- |
| 34 | 3 | **CaIntegrator Version 1.4** | 146d? | 2011-08-01 A | 2012-03-05 |  | 51% | 71.83d? | 112d |  |  |  | 1912h | 1048.8h |
| 35 | 3.1 | Version 1.4 planning/priortization | 2d | 2011-08-01 A | 2011-08-02 A |  | 100% |  |  |  |  |  |  |  |
| 36 | 3.2 | **JIRA CAINT-1015 Tech Stack Upgrade** | 101d | 2011-08-03 A | 2012-01-04 | 35 | 97% | 3.41d | 120d |  |  |  | 592h | 572h |
| 37 | 3.2.1 | Planning | 2d | 2011-08-03 A | 2011-08-04 A |  | 100% |  |  |  |  | JP | 16h | 16h |
| 38 | 3.2.2 | CI to Jenkins | 2d | 2011-09-07 A | 2011-09-08 A | 37, 61 | 100% |  |  |  |  | JP | 16h | 16h |
| 39 | 3.2.3 | ANT 1.8 | 3d | 2011-09-09 A | 2011-09-13 A | 38 | 100% |  |  |  |  | JP | 24h | 24h |
| 40 | 3.2.4 | Support for Version 1.3.1 RC1 | 2d | 2011-09-20 A | 2011-09-21 A | 18 | 100% |  |  |  |  | JP | 16h | 16h |
| 41 | 3.2.5 | JIRA CAINT-1055 Migration from nexus | 9d | 2011-10-06 A | 2011-10-18 A | 39 | 100% |  |  |  |  | MAX | 72h | 72h |
| 42 | 3.2.6 | JIRA CAINT-1058 Implement Artifact Configuration | 9d | 2011-10-26 A | 2011-11-07 A | 41 | 100% |  |  |  |  | MAX | 72h | 72h |
| 43 | 3.2.7 | JIRA CAINT-(1065,1070) Bugs, JBOSS vulnerability and resolve, IE issue | 14d | 2011-11-07 A | 2011-11-29 A | 31 | 100% |  |  |  |  | JP | 112h | 112h |
| 44 | 3.2.8 | JIRA CAINT-(1059,1012) PTE form, JBOSS upgrade | 8d | 2011-11-08 A | 2011-11-18 A | 42 | 100% |  |  |  |  | MAX | 64h | 64h |
| 45 | 3.2.9 | JIRA CAINT(1060,1061, 1010) build track setup Anthill Pro 3, Jenkins CI, Test | 25d | 2011-11-21 A | 2012-01-04 | 44 | 90% | 2.5d | 136d | 0d |  | MAX | 200h | 180h |
| 46 | 3.3 | **TRANSCEND Support** | 78d? | 2011-10-25 A | 2012-02-22 |  | 46% | 42.28d? | 120d |  |  |  | 552h | 252.8h |
| 47 | 3.3.1 | Refine requirements for permission model | 3d | 2011-10-25 A | 2011-10-27 A |  | 100% |  |  |  | start no earlier than 2011-10-25 | SJ | 24h | 24h |
| 48 | 3.3.2 | Create wireframe for permission model | 2d | 2011-10-28 A | 2011-10-31 A | 47 | 100% |  |  |  |  | Andy | 16h | 16h |
| 49 | 3.3.3 | Demo (internal team) wireframe for permission model | 1d? | 2011-11-01 A | 2011-11-01 A | 48 | 100% |  |  |  |  | WF | 8h | 8h |
| 50 | 3.3.4 | Discussion to finalize the requirements with TRANSCEND (for permissions) | 6d | 2011-11-02 A | 2011-11-09 A | 49 | 100% |  |  |  |  | SJ | 48h | 48h |
| 51 | 3.3.5 | Finalize Archive User Stories | 6d | 2011-11-22 A | 2011-12-01 A |  | 100% |  |  |  | start no earlier than 2011-11-22 | SJ | 48h | 48h |
| 52 | 3.3.6 | Permission Model - discussion and documentation | 3d | 2011-12-08 A | 2011-12-12 A |  | 100% |  |  |  | start no earlier than 2011-12-08 | JP | 24h | 24h |
| 53 | 3.3.7 | JIRA CAINT-1078 TRANSCEND - authorization user story CSM investigation | 7d | 2011-12-13 A | 2011-12-21 A | 69, 52 | 100% |  |  |  |  | JP | 56h | 56h |
| 54 | 3.3.8 | caArray/caIntegrator permission Architecure review | 3d? | 2011-12-19 A | 2011-12-21 A |  | 100% |  |  |  | start no earlier than 2011-12-19 | ALL | 24h | 24h |
| 55 | 3.3.9 | Create sample studies on caIntegrator | 3d | 2012-01-03 A | 2012-01-05 | 54 | 20% | 2.4d | 154d |  | start no earlier than 2012-01-03 | SJ | 24h | 4.8h |
| 56 | 3.3.10 | JIRA CAINT-998 -Version control (create shell study) | 14d | 2012-01-05 | 2012-01-24 | 45 |  |  | 120d | 0d |  | MAX | 112h |  |
| 57 | 3.3.11 | JIRA CAINT-998 Version control (Archive) | 5d | 2012-01-25 | 2012-01-31 | 56 |  |  | 120d | 0d |  | MAX | 40h |  |
| 58 | 3.3.12 | Finalize Architecture for permission model | 1d? | 2012-02-01 | 2012-02-01 | 57 |  |  | 120d | 0d | start no earlier than 2012-01-30 | Santosh | 8h |  |
| 59 | 3.3.13 | TRANSCEND Permission Model Implementation | 15d | 2012-02-02 | 2012-02-22 | 58 |  |  | 120d |  |  | JP | 120h |  |

| ID | WBS | Task | Duration | Start | Finish | Predecessors | Complete | Remaining | Total slack | Free slack | Constraint | Resources | Work | Actual work |
| --- | --- | --- | --- | --- | --- | --- | --- | --- | --- | --- | --- | --- | --- | --- |
| 60 | 3.4 | **Ongoing maintenance and bug fixes** | 104d? | 2011-08-31 A | 2012-02-06 |  | 32% | 70.53d? | 132d |  |  |  | 688h | 224h |
| 61 | 3.4.1 | ADF platform issues | 2d | 2011-08-31 A | 2011-09-01 A |  | 100% |  |  |  | start no earlier than 2011-08-31 | JP | 16h | 16h |
| 62 | 3.4.2 | Data issues with training tier | 3d | 2011-09-23 A | 2011-09-27 A |  | 100% |  |  |  | start no earlier than 2011-09-23 | JP | 24h | 24h |
| 63 | 3.4.3 | Xenoline Requirements Gathering | 10d | 2011-11-07 A | 2011-11-21 A |  | 100% |  |  |  | start no earlier than 2011-11-07 | SJ | 80h | 80h |
| 64 | 3.4.4 | Xenoline Data update information | 1d? | 2012-01-03 | 2012-01-03 |  |  |  | 145d | 0d | start no earlier than 2012-01-03 |  |  |  |
| 65 | 3.4.5 | Xenoline ARC document | 4d | 2012-01-04 | 2012-01-09 | 64 |  |  | 145d | 0d | start no earlier than 2011-12-01 | SJ | 32h |  |
| 66 | 3.4.6 | Xenoline setup server/ftp site | 7d | 2012-01-10 | 2012-01-18 | 65 |  |  | 145d |  |  | Coung/Systems | 56h |  |
| 67 | 3.4.7 | caDSR requirements for caIntegrator (Meeting with Denise) | 3d | 2011-12-14 A | 2011-12-16 A |  | 100% |  |  |  | start no earlier than 2011-12-14 | SJ | 24h | 24h |
| 68 | 3.4.8 | JIRA CAINT-1075 Error on copyNumber data deployments | 3d | 2011-11-30 A | 2011-12-02 A | 43 | 100% |  |  |  |  | JP | 24h | 24h |
| 69 | 3.4.9 | JIRA CAINT-986 Integration with IGV 2.0 | 3d | 2011-12-05 A | 2011-12-07 A | 68 | 100% |  |  |  |  | JP | 24h | 24h |
| 70 | 3.4.10 | JIRA CAINT-1083 BioPortals Tiger Team requirements. | 4d | 2011-12-21 A | 2012-01-03 A |  | 100% |  |  |  | start no earlier than 2011-12-21 | JP | 32h | 32h |
| 71 | 3.4.11 | JIRA CAINT-1081 Agilent 44K deployment | 4d | 2012-01-04 | 2012-01-09 | 70 |  |  | 152d |  |  | JP | 32h |  |
| 72 | 3.4.12 | **JIRA-CAINT-966 - Generic Platform Support** | 43d | 2011-11-30 | 2012-02-06 |  |  |  | 0d |  |  |  | 344h |  |
| 73 | 3.4.12.1 | Create new generic platform model by extending expression platform. | 8d | 2011-11-30 | 2011-12-09 | 43 |  |  | 0d |  |  | JP | 64h |  |
| 74 | 3.4.12.2 | Modify the generic platform loader to accept MAGE-TAB. | 5d | 2011-12-12 | 2011-12-16 | 73 |  |  | 0d |  |  | JP | 40h |  |
| 75 | 3.4.12.3 | Modify the study deployment process to load the new platform data from caArray. | 8d | 2011-12-19 | 2012-01-05 | 74 |  |  | 0d |  |  | JP | 64h |  |
| 76 | 3.4.12.4 | modify front-end analysis tools to show a new title according to platform type. | 3d | 2012-01-06 | 2012-01-10 | 75 |  |  | 0d |  |  | JP | 24h |  |
| 77 | 3.4.12.5 | Modify the Query interface to allow selection of a generic expression data type. | 14d | 2012-01-11 | 2012-01-30 | 76 |  |  | 0d |  |  | JP | 112h |  |
| 78 | 3.4.12.6 | Modify front-end for IGV and heatmap to display a selector for choosing a generic expression data type. | 5d | 2012-01-31 | 2012-02-06 | 77 |  |  | 0d |  |  | JP | 40h |  |
| 79 | 3.5 | QA | 10d | 2012-02-07 | 2012-02-20 | 72 |  |  | 0d |  |  | HS | 80h |  |
| 80 | 3.6 | Documentation | 10d | 2012-02-07 | 2012-02-20 | 72 |  |  | 122d |  |  |  |  |  |
| 81 | 3.7 | Appscan/Stage/Prod release | 10d | 2012-02-21 | 2012-03-05 | 79 |  |  | 112d |  |  |  |  |  |
| 82 | 4 | **CaIntegrator Version 1.5** | 258d? | 2011-08-01 | 2012-08-08 |  |  |  | 0d |  |  |  | 1280h |  |
| 83 | 4.1 | Version 1.5 planning/priortization | 2d | 2012-02-21 | 2012-02-22 | 79 |  |  | 0d |  |  |  |  |  |

| ID | WBS | Task | Duration | Start | Finish | Predecessors | Total slack | Free slack | Resources | Work |
| --- | --- | --- | --- | --- | --- | --- | --- | --- | --- | --- |
| 84 | 4.2 | **TRANSCEND Support** | 218d? | 2011-08-01 | 2012-06-13 |  | 40d |  |  | 1120h |
| 85 | 4.2.1 | JIRA CAINT-998 - TRANSCEND Permissions Support | 40d | 2012-02-23 | 2012-04-18 | 83 | 0d |  | JP | 320h |
| 86 | 4.2.2 | JIRA CAINT-998 Automatic Refresh | 40d | 2012-02-23 | 2012-04-18 | 83 | 60d | 0d | TBH | 320h |
| 87 | 4.2.3 | JIRA CAINT-998 Single Sign-on | 40d | 2012-04-19 | 2012-06-13 | 85 | 0d |  | TBH | 320h |
| 88 | 4.2.4 | JIRA CAINT-49 Integrate with private studies in NBIA | 20d | 2012-04-19 | 2012-05-16 | 86 | 60d |  | JP | 160h |
| 89 | 4.2.5 | JIRA CAINT-1045 Performance Requirements | 1d? | 2011-08-01 | 2011-08-01 |  | 257d |  |  |  |
| 90 | 4.3 | JIRA CAINT-1041 - Support NCI Funded Studies Deployment | 20d | 2012-06-14 | 2012-07-11 | 87 | 0d |  | TBH | 160h |
| 91 | 4.4 | QA | 20d | 2012-07-12 | 2012-08-08 | 90 | 0d |  |  |  |
| 92 | 4.5 | Documentation | 10d | 2012-07-12 | 2012-07-25 | 90 | 0d |  |  |  |
| 93 | 4.6 | Appscan/Stage/Prod release | 10d | 2012-07-26 | 2012-08-08 | 92 | 0d |  |  |  |
